# Children's book schedule

How a schedule from MS Project changed from version to version. A marks actual dates.

## Version 1 (saved 2013-02-12, file 02-fine-tuning-tasks.mpp)

Note of the change: Initial release: SuperGantt planner with MPP open/save.

| ID | WBS | Task | Duration | Start | Finish | Predecessors | Total float | Constraint |
| --- | --- | --- | --- | --- | --- | --- | --- | --- |
| 1 | 1 | **Acquisition** | 28d | 2015-04-06 | 2015-05-13 |  | 0d |  |
| 2 |  | Manuscript received | 0d | 2015-04-06 | 2015-04-06 |  | 0d |  |
| 3 |  | Content edit | 15d | 2015-04-06 | 2015-04-29 | 2 | 0d |  |
| 4 |  | Author review of content edit | 10d | 2015-04-30 | 2015-05-13 | 3 | 0d |  |
| 5 |  | Handoff to Editorial | 0d | 2015-05-13 | 2015-05-13 | 4 | 0d |  |
| 6 | 2 | **Editorial** | 37.5d | 2015-05-14 | 2015-07-06 | 1 | 0d |  |
| 7 |  | Organize manuscript for copyedit | 5d | 2015-05-14 | 2015-05-20 |  | 0d |  |
| 8 |  | Copyedit | 20d | 2015-05-21 | 2015-06-17 | 7 | 0d |  |
| 9 |  | Author review of copyedit | 10d | 2015-06-18 | 2015-07-01 | 8 | 0d |  |
| 10 |  | Copyedit incorp | 5d | 2015-06-29 | 2015-07-06 | 9FS-2.5% | 0d |  |
| 11 |  | Handoff to Production | 0d | 2015-07-06 | 2015-07-06 | 10 | 0d |  |
| 12 | 3 | **Design and Production** | 50d | 2015-07-06 | 2015-09-14 | 6 | 0d |  |
| 13 |  | Set pages | 15d | 2015-07-06 | 2015-07-27 |  | 0d |  |
| 14 |  | Interior illustration design | 15d | 2015-07-06 | 2015-07-27 | 13SS | 0d |  |
| 15 | 3.3 | **1st Pages review** | 25d | 2015-07-27 | 2015-08-31 | 14 | 0d |  |
| 16 |  | Proofread and index | 10d | 2015-07-27 | 2015-08-10 |  | 0d | start no earlier than 2015-07-17 |
| 17 |  | Incorporate 1st Pages review | 5d | 2015-08-10 | 2015-08-17 | 16 | 0d |  |
| 18 |  | Send proofed pages to Production | 0d | 2015-08-17 | 2015-08-17 | 17 | 0d |  |
| 19 |  | Enter page corrections and index | 5d | 2015-08-17 | 2015-08-24 | 18 | 0d |  |
| 20 |  | Cover design | 5d | 2015-08-24 | 2015-08-31 | 19 | 0d |  |
| 21 | 3.4 | **2nd Pages review** | 10d | 2015-08-31 | 2015-09-14 |  | 0d |  |
| 22 |  | Proof and review | 5d | 2015-08-31 | 2015-09-07 | 20 | 0d |  |
| 23 |  | Send proofed pages to Production | 0d | 2015-09-07 | 2015-09-07 | 22 | 0d |  |
| 24 |  | Final review | 5d | 2015-09-07 | 2015-09-14 | 23 | 0d |  |
| 25 | 3.5 | **Design book's companion website** | 5d | 2015-08-31 | 2015-09-07 |  | 5d |  |
| 26 |  | Create mockup | 3d | 2015-08-31 | 2015-09-03 | 20 | 4.5d |  |
| 27 |  | Review with author | 2d | 2015-09-03 | 2015-09-07 | 26 | 4.5d |  |
| 28 | 4 | **Color prep and printing** | 44d | 2015-09-14 | 2015-11-13 |  | 0d |  |
| 29 |  | Send to color house | 1d | 2015-09-14 | 2015-09-15 | 24, 27 | 0d |  |
| 30 |  | Generate proofs | 10d | 2015-09-15 | 2015-09-29 | 29 | 0d |  |
| 31 |  | Print and ship | 30d | 2015-10-02 | 2015-11-13 | 30FS+3d | 0d |  |

## Version 2 (data date 2015-08-03, saved 2013-02-13, file 07-back-on-track.mpp)

Note of the change: Initial release: SuperGantt planner with MPP open/save.

Last finish 2015-11-13 → 2015-12-11 (+28d). Complete tasks 0 → 19.

Added:

| ID | Task | Duration | Start | Finish | Predecessors | Constraint | Resources |
| --- | --- | --- | --- | --- | --- | --- | --- |
| 1 | **Editorial staff meeting** | 83.12d | 2015-04-13 A | 2015-08-06 |  |  |  |
| 2 | Editorial staff meeting 1 | 1h | 2015-04-13 A | 2015-04-13 A |  | start no earlier than 2015-04-13 | Carole Poland; Jun Cao; Hany Morcos; Dan Jump [50%] |
| 3 | Editorial staff meeting 2 | 1h | 2015-04-20 A | 2015-04-20 A |  | start no earlier than 2015-04-20 | Carole Poland; Jun Cao; Hany Morcos; Dan Jump [50%] |
| 4 | Editorial staff meeting 3 | 1h | 2015-04-27 A | 2015-04-27 A |  | start no earlier than 2015-04-27 | Carole Poland; Jun Cao; Hany Morcos; Dan Jump [50%] |
| 5 | Editorial staff meeting 4 | 1h | 2015-05-04 A | 2015-05-04 A |  | start no earlier than 2015-05-04 | Carole Poland; Jun Cao; Hany Morcos; Dan Jump [50%] |
| 6 | Editorial staff meeting 5 | 1h | 2015-05-11 A | 2015-05-11 A |  | start no earlier than 2015-05-11 | Carole Poland; Jun Cao; Hany Morcos; Dan Jump [50%] |
| 7 | Editorial staff meeting 6 | 1h | 2015-05-18 A | 2015-05-18 A |  | start no earlier than 2015-05-18 | Carole Poland; Jun Cao; Hany Morcos; Dan Jump [50%] |
| 8 | Editorial staff meeting 7 | 1h | 2015-05-25 A | 2015-05-25 A |  | start no earlier than 2015-05-25 | Carole Poland; Jun Cao; Hany Morcos; Dan Jump [50%] |
| 9 | Editorial staff meeting 8 | 2h | 2015-08-05 | 2015-08-06 |  | start no earlier than 2015-08-05 | Carole Poland; Jun Cao; Hany Morcos; Dan Jump [50%] |
| 10 | Editorial staff meeting 9 | 2h | 2015-08-05 | 2015-08-06 |  | start no earlier than 2015-08-05 | Carole Poland; Jun Cao; Hany Morcos; Dan Jump [50%] |
| 11 | Editorial staff meeting 10 | 2h | 2015-08-05 | 2015-08-06 |  | start no earlier than 2015-08-05 | Carole Poland; Jun Cao; Hany Morcos; Dan Jump [50%] |
| 12 | Editorial staff meeting 11 | 2h | 2015-08-05 | 2015-08-06 |  | start no earlier than 2015-08-05 | Carole Poland; Jun Cao; Hany Morcos; Dan Jump [50%] |
| 13 | Editorial staff meeting 12 | 2h | 2015-08-05 | 2015-08-06 |  | start no earlier than 2015-08-05 | Carole Poland; Jun Cao; Hany Morcos; Dan Jump [50%] |
| 14 | Editorial staff meeting 13 | 2h | 2015-08-05 | 2015-08-06 |  | start no earlier than 2015-08-05 | Carole Poland; Jun Cao; Hany Morcos; Dan Jump [50%] |
| 18 | Original art review | 10.25d | 2015-04-23 A | 2015-05-07 A | 17FS-5d |  | Hany Morcos; Jane Dow |
| 47 | **Book launch prep** | 22d | 2015-10-14 | 2015-11-12 |  |  |  |
| 48 | Launch planning | 5d | 2015-10-14 | 2015-10-20 | 44 |  | Carole Poland [50%]; Jane Dow |
| 49 | Assign launch team members | 1d | 2015-10-21 | 2015-10-21 | 48 |  | Carole Poland |
| 50 | Complete author questionnaire | 5d | 2015-10-22 | 2015-10-28 | 49 |  | Hany Morcos; Tad Orman; Travel [0.1%] |
| 51 | Schedule author interviews | 1d | 2015-10-29 | 2015-10-29 | 50 |  | Hany Morcos |
| 52 | Design and order marketing material | 10d | 2015-10-30 | 2015-11-12 | 51 |  | Hany Morcos |

Changed:

| ID | Task | Start | Finish | Duration | Complete | Total float | Predecessors | Other |
| --- | --- | --- | --- | --- | --- | --- | --- | --- |
| 15 | **Acquisition** | 2015-04-06 A | 2015-05-13 → 2015-05-26 A (+13d) | 28d → 37d | 0% → 100% | 0d → none |  | baseline start none → 2015-04-06; baseline finish none → 2015-05-25 |
| 16 | Manuscript received | 2015-04-06 A | 2015-04-06 A |  | 0% → 100% | 0d → none |  | baseline start none → 2015-04-06; baseline finish none → 2015-04-06 |
| 17 | Content edit | 2015-04-06 A | 2015-04-29 → 2015-04-30 A (+1d) |  | 0% → 100% | 0d → none |  | baseline start none → 2015-04-06; baseline finish none → 2015-04-30 |
| 19 | Author review of content edit | 2015-04-30 → 2015-05-07 A (+7d) | 2015-05-13 → 2015-05-26 A (+13d) | 10d → 13.5d | 0% → 100% | 0d → none | 17 → 17, 18 | resources Tad Orman; Copyeditors [25%] → Tad Orman; Copyeditors; baseline start none → 2015-05-07; baseline finish none → 2015-05-25 |
| 20 | Handoff to Editorial | 2015-05-13 → 2015-05-26 A (+13d) | 2015-05-13 → 2015-05-26 A (+13d) |  | 0% → 100% | 0d → none |  | baseline start none → 2015-05-25; baseline finish none → 2015-05-25 |
| 21 | **Editorial** | 2015-05-14 → 2015-05-27 A (+13d) | 2015-07-06 A | 37.5d → 28.4d | 0% → 100% | 0d → none |  | baseline start none → 2015-05-25; baseline finish none → 2015-07-03 |
| 22 | Organize manuscript for copyedit | 2015-05-14 → 2015-05-27 A (+13d) | 2015-05-20 → 2015-06-02 A (+13d) |  | 0% → 100% | 0d → none |  | resources Hany Morcos → Hany Morcos; Dan Jump [50%]; baseline start none → 2015-05-25; baseline finish none → 2015-06-01 |
| 23 | Copyedit | 2015-05-21 → 2015-06-03 A (+13d) | 2015-06-17 A | 20d → 10.5d | 0% → 100% | 0d → none |  | resources Copyeditors [150%] → Copyeditors [200%]; baseline start none → 2015-06-01; baseline finish none → 2015-06-16 |
| 24 | Author review of copyedit | 2015-06-18 → 2015-06-17 A (-1d) | 2015-07-01 A | 10d → 10.2d | 0% → 100% | 0d → none |  | baseline start none → 2015-06-16; baseline finish none → 2015-06-30 |
| 25 | Copyedit incorp | 2015-06-29 A | 2015-07-06 A | 5d → 5.12d | 0% → 100% | 0d → none |  | resources Hany Morcos → Carole Poland; Dan Jump [50%]; baseline start none → 2015-06-26; baseline finish none → 2015-07-03 |
| 26 | Handoff to Production | 2015-07-06 A | 2015-07-06 A |  | 0% → 100% | 0d → none |  | baseline start none → 2015-07-03; baseline finish none → 2015-07-03 |
| 27 | **Design and Production** | 2015-07-06 A | 2015-09-14 → 2015-10-12 (+28d) | 50d → 70.6d | 0% → 43% | 0d → -11d |  | baseline start none → 2015-07-03; baseline finish none → 2015-09-23 |
| 28 | Set pages | 2015-07-06 A | 2015-07-27 A |  | 0% → 100% | 0d → none |  | baseline start none → 2015-07-03; baseline finish none → 2015-07-24 |
| 29 | Interior illustration design | 2015-07-06 → 2015-07-13 A (+7d) | 2015-07-27 → 2015-08-11 A (+15d) | 15d → 22d | 0% → 100% | 0d → none |  | resources Luis Sousa → Luis Sousa; Hany Morcos; baseline start none → 2015-07-03; baseline finish none → 2015-07-24 |
| 30 | **1st Pages review** | 2015-07-27 → 2015-08-12 (+16d) | 2015-08-31 → 2015-09-28 (+28d) | 25d → 34d |  | 0d → -11d |  | baseline start none → 2015-07-24; baseline finish none → 2015-09-04 |
| 31 | Proofread and index | 2015-07-27 → 2015-08-12 (+16d) | 2015-08-10 → 2015-08-31 (+21d) | 10d → 14d |  | 0d → -11d |  | baseline start none → 2015-07-24; baseline finish none → 2015-08-07 |
| 32 | Incorporate 1st Pages review | 2015-08-10 → 2015-09-01 (+22d) | 2015-08-17 → 2015-09-14 (+28d) | 5d → 10d |  | 0d → -11d |  | resources Hany Morcos → Hany Morcos; Dan Jump [50%]; baseline start none → 2015-08-07; baseline finish none → 2015-08-21 |
| 33 | Send proofed pages to Production | 2015-08-17 → 2015-09-14 (+28d) | 2015-08-17 → 2015-09-14 (+28d) |  |  | 0d → -11d |  | baseline start none → 2015-08-21; baseline finish none → 2015-08-21 |
| 34 | Enter page corrections and index | 2015-08-17 → 2015-09-15 (+29d) | 2015-08-24 → 2015-09-21 (+28d) |  |  | 0d → -11d |  | resources Jane Dow → Jane Dow; Dan Jump [50%]; baseline start none → 2015-08-21; baseline finish none → 2015-08-28 |
| 35 | Cover design | 2015-08-24 → 2015-09-22 (+29d) | 2015-08-31 → 2015-09-28 (+28d) |  |  | 0d → -11d |  | baseline start none → 2015-08-28; baseline finish none → 2015-09-04 |
| 36 | **2nd Pages review** | 2015-08-31 → 2015-09-29 (+29d) | 2015-09-14 → 2015-10-12 (+28d) |  |  | 0d → -11d |  | baseline start none → 2015-09-04; baseline finish none → 2015-09-23 |
| 37 | Proof and review | 2015-08-31 → 2015-09-29 (+29d) | 2015-09-07 → 2015-10-05 (+28d) |  |  | 0d → -11d |  | baseline start none → 2015-09-04; baseline finish none → 2015-09-15 |
| 38 | Send proofed pages to Production | 2015-09-07 → 2015-10-05 (+28d) | 2015-09-07 → 2015-10-05 (+28d) |  |  | 0d → -11d |  | baseline start none → 2015-09-15; baseline finish none → 2015-09-15 |
| 39 | Final review | 2015-09-07 → 2015-10-06 (+29d) | 2015-09-14 → 2015-10-12 (+28d) |  |  | 0d → -11d |  | resources Jane Dow; Hany Morcos; Carole Poland → Jane Dow; Hany Morcos [50%]; Carole Poland [50%]; Bound galley proofs [20 copies]; baseline start none → 2015-09-16; baseline finish none → 2015-09-23 |
| 40 | **Design book's companion website** | 2015-08-31 → 2015-09-29 (+29d) | 2015-09-07 → 2015-10-05 (+28d) |  |  | 5d → -6d |  | baseline start none → 2015-09-04; baseline finish none → 2015-09-18 |
| 41 | Create mockup | 2015-08-31 → 2015-09-29 (+29d) | 2015-09-03 → 2015-10-01 (+28d) |  |  | 4.5d → -6d |  | resources Luis Sousa → Luis Sousa; Hany Morcos; baseline start none → 2015-09-04; baseline finish none → 2015-09-16 |
| 42 | Review with author | 2015-09-03 → 2015-10-02 (+29d) | 2015-09-07 → 2015-10-05 (+28d) |  |  | 4.5d → -6d |  | resources Luis Sousa; Tad Orman → Luis Sousa; Tad Orman; Travel [0.1%]; Dan Jump [50%]; baseline start none → 2015-09-16; baseline finish none → 2015-09-18 |
| 43 | **Color prep and printing** | 2015-09-14 → 2015-10-13 (+29d) | 2015-11-13 → 2015-12-11 (+28d) |  |  | 0d → -11d |  | baseline start none → 2015-09-23; baseline finish none → 2015-11-26 |
| 44 | Send to color house | 2015-09-14 → 2015-10-13 (+29d) | 2015-09-15 → 2015-10-13 (+28d) |  |  | 0d → -7d |  | baseline start none → 2015-09-23; baseline finish none → 2015-09-28 |
| 45 | Generate proofs | 2015-09-15 → 2015-10-14 (+29d) | 2015-09-29 → 2015-10-27 (+28d) |  |  | 0d → -11d |  | baseline start none → 2015-09-28; baseline finish none → 2015-10-12 |
| 46 | Print and ship | 2015-10-02 → 2015-11-02 (+31d) | 2015-11-13 → 2015-12-11 (+28d) |  |  |  |  | baseline start none → 2015-10-15; baseline finish none → 2015-11-26 |

## Version 3 (saved 2013-02-13, file 01-advanced-tasks.mpp)

Note of the change: Initial release: SuperGantt planner with MPP open/save.

Last finish 2015-12-11 → 2015-11-19 (-22d). Complete tasks 19 → 0.

Removed: 1 Editorial staff meeting; 2 Editorial staff meeting 1; 3 Editorial staff meeting 2; 4 Editorial staff meeting 3; 5 Editorial staff meeting 4; 6 Editorial staff meeting 5; 7 Editorial staff meeting 6; 8 Editorial staff meeting 7; 9 Editorial staff meeting 8; 10 Editorial staff meeting 9; 11 Editorial staff meeting 10; 12 Editorial staff meeting 11; 13 Editorial staff meeting 12; 14 Editorial staff meeting 13; 18 Original art review; 47 Book launch prep; 48 Launch planning; 49 Assign launch team members; 50 Complete author questionnaire; 51 Schedule author interviews; 52 Design and order marketing material

Changed:

| ID | Task | Start | Finish | Duration | Complete | Total float | Predecessors | Other |
| --- | --- | --- | --- | --- | --- | --- | --- | --- |
| 1 | **Acquisition** | 2015-04-06 A → 2015-04-06 | 2015-05-26 A → 2015-05-08 (-18d) | 37d → 25d | 100% → 0% | none → 0d |  | baseline start 2015-04-06 → none; baseline finish 2015-05-25 → none |
| 2 | Manuscript received | 2015-04-06 A → 2015-04-06 | 2015-04-06 A → 2015-04-06 |  | 100% → 0% | none → 0d |  | baseline start 2015-04-06 → none; baseline finish 2015-04-06 → none |
| 3 | Content edit | 2015-04-06 A → 2015-04-06 | 2015-04-30 A → 2015-04-24 (-6d) |  | 100% → 0% | none → 0d |  | baseline start 2015-04-06 → none; baseline finish 2015-04-30 → none |
| 4 | Author review of content edit | 2015-05-07 A → 2015-04-27 (-10d) | 2015-05-26 A → 2015-05-08 (-18d) | 13.5d → 10d | 100% → 0% | none → 0d | 3, Original art review → 3 | resources Tad Orman; Copyeditors → Tad Orman; Copyeditors [25%]; baseline start 2015-05-07 → none; baseline finish 2015-05-25 → none |
| 5 | Handoff to Editorial | 2015-05-26 A → 2015-05-08 (-18d) | 2015-05-26 A → 2015-05-08 (-18d) |  | 100% → 0% | none → 0d |  | baseline start 2015-05-25 → none; baseline finish 2015-05-25 → none |
| 6 | **Editorial** | 2015-05-27 A → 2015-05-11 (-16d) | 2015-07-06 A → 2015-06-26 (-10d) | 28.4d → 35d | 100% → 0% | none → 0d |  | baseline start 2015-05-25 → none; baseline finish 2015-07-03 → none |
| 7 | Organize manuscript for copyedit | 2015-05-27 A → 2015-05-11 (-16d) | 2015-06-02 A → 2015-05-15 (-18d) |  | 100% → 0% | none → 0d |  | resources Hany Morcos; Dan Jump [50%] → Hany Morcos; baseline start 2015-05-25 → none; baseline finish 2015-06-01 → none |
| 8 | Copyedit | 2015-06-03 A → 2015-05-18 (-16d) | 2015-06-17 A → 2015-06-05 (-12d) | 10.5d → 15d | 100% → 0% | none → 0d |  | baseline start 2015-06-01 → none; baseline finish 2015-06-16 → none |
| 9 | Author review of copyedit | 2015-06-17 A → 2015-06-08 (-9d) | 2015-07-01 A → 2015-06-19 (-12d) | 10.2d → 10d | 100% → 0% | none → 0d |  | baseline start 2015-06-16 → none; baseline finish 2015-06-30 → none |
| 10 | Copyedit incorp | 2015-06-29 A → 2015-06-22 (-7d) | 2015-07-06 A → 2015-06-26 (-10d) | 5.12d → 5d | 100% → 0% | none → 0d | 9FS-2.5% → 9 | resources Carole Poland; Dan Jump [50%] → Hany Morcos; baseline start 2015-06-26 → none; baseline finish 2015-07-03 → none |
| 11 | Handoff to Production | 2015-07-06 A → 2015-06-26 (-10d) | 2015-07-06 A → 2015-06-26 (-10d) |  | 100% → 0% | none → 0d |  | baseline start 2015-07-03 → none; baseline finish 2015-07-03 → none |
| 12 | **Design and Production** | 2015-07-06 A → 2015-06-29 (-7d) | 2015-10-12 → 2015-09-23 (-19d) | 70.6d → 63d | 43% → 0% | -11d → 0d |  | baseline start 2015-07-03 → none; baseline finish 2015-09-23 → none |
| 13 | Set pages | 2015-07-06 A → 2015-06-29 (-7d) | 2015-07-27 A → 2015-07-17 (-10d) |  | 100% → 0% | none → 0d |  | baseline start 2015-07-03 → none; baseline finish 2015-07-24 → none |
| 14 | Interior illustration design | 2015-07-13 A → 2015-07-20 (+7d) | 2015-08-11 A → 2015-08-07 (-4d) | 22d → 15d | 100% → 0% | none → 0d | 13SS → 13 | resources Luis Sousa; Hany Morcos → Luis Sousa; baseline start 2015-07-03 → none; baseline finish 2015-07-24 → none |
| 15 | **1st Pages review** | 2015-08-12 → 2015-08-10 (-2d) | 2015-09-28 → 2015-09-11 (-17d) | 34d → 25d |  | -11d → 0d |  | baseline start 2015-07-24 → none; baseline finish 2015-09-04 → none |
| 16 | Proofread and index | 2015-08-12 → 2015-08-10 (-2d) | 2015-08-31 → 2015-08-21 (-10d) | 14d → 10d |  | -11d → 0d |  | constraint start no earlier than 2015-07-17 → none; baseline start 2015-07-24 → none; baseline finish 2015-08-07 → none |
| 17 | Incorporate 1st Pages review | 2015-09-01 → 2015-08-24 (-8d) | 2015-09-14 → 2015-08-28 (-17d) | 10d → 5d |  | -11d → 0d |  | resources Hany Morcos; Dan Jump [50%] → Hany Morcos; baseline start 2015-08-07 → none; baseline finish 2015-08-21 → none |
| 18 | Send proofed pages to Production | 2015-09-14 → 2015-08-28 (-17d) | 2015-09-14 → 2015-08-28 (-17d) |  |  | -11d → 0d |  | baseline start 2015-08-21 → none; baseline finish 2015-08-21 → none |
| 19 | Enter page corrections and index | 2015-09-15 → 2015-08-31 (-15d) | 2015-09-21 → 2015-09-04 (-17d) |  |  | -11d → 0d |  | resources Jane Dow; Dan Jump [50%] → Jane Dow; baseline start 2015-08-21 → none; baseline finish 2015-08-28 → none |
| 20 | Cover design | 2015-09-22 → 2015-09-07 (-15d) | 2015-09-28 → 2015-09-11 (-17d) |  |  | -11d → 0d |  | baseline start 2015-08-28 → none; baseline finish 2015-09-04 → none |
| 21 | **2nd Pages review** | 2015-09-29 → 2015-09-14 (-15d) | 2015-10-12 → 2015-09-23 (-19d) | 10d → 8d |  | -11d → 0d |  | baseline start 2015-09-04 → none; baseline finish 2015-09-23 → none |
| 22 | Proof and review | 2015-09-29 → 2015-09-14 (-15d) | 2015-10-05 → 2015-09-17 (-18d) | 5d → 4d |  | -11d → 0d |  | baseline start 2015-09-04 → none; baseline finish 2015-09-15 → none |
| 23 | Send proofed pages to Production | 2015-10-05 → 2015-09-17 (-18d) | 2015-10-05 → 2015-09-17 (-18d) |  |  | -11d → 0d |  | baseline start 2015-09-15 → none; baseline finish 2015-09-15 → none |
| 24 | Final review | 2015-10-06 → 2015-09-18 (-18d) | 2015-10-12 → 2015-09-23 (-19d) | 5d → 4d |  | -11d → 0d |  | resources Jane Dow; Hany Morcos [50%]; Carole Poland [50%]; Bound galley proofs [20 copies] → Jane Dow; Hany Morcos; Carole Poland; baseline start 2015-09-16 → none; baseline finish 2015-09-23 → none |
| 25 | **Design book's companion website** | 2015-09-29 → 2015-09-14 (-15d) | 2015-10-05 → 2015-09-18 (-17d) |  |  | -6d → 3d |  | baseline start 2015-09-04 → none; baseline finish 2015-09-18 → none |
| 26 | Create mockup | 2015-09-29 → 2015-09-14 (-15d) | 2015-10-01 → 2015-09-16 (-15d) |  |  | -6d → 3d |  | resources Luis Sousa; Hany Morcos → Luis Sousa; baseline start 2015-09-04 → none; baseline finish 2015-09-16 → none |
| 27 | Review with author | 2015-10-02 → 2015-09-17 (-15d) | 2015-10-05 → 2015-09-18 (-17d) |  |  | -6d → 3d |  | resources Luis Sousa; Tad Orman; Travel [0.1%]; Dan Jump [50%] → Luis Sousa; Tad Orman; baseline start 2015-09-16 → none; baseline finish 2015-09-18 → none |
| 28 | **Color prep and printing** | 2015-10-13 → 2015-09-24 (-19d) | 2015-12-11 → 2015-11-19 (-22d) | 44d → 41d |  | -11d → 0d |  | baseline start 2015-09-23 → none; baseline finish 2015-11-26 → none |
| 29 | Send to color house | 2015-10-13 → 2015-09-24 (-19d) | 2015-10-13 → 2015-09-24 (-19d) |  |  | -7d → 0d |  | baseline start 2015-09-23 → none; baseline finish 2015-09-28 → none |
| 30 | Generate proofs | 2015-10-14 → 2015-09-25 (-19d) | 2015-10-27 → 2015-10-08 (-19d) |  |  | -11d → 0d |  | baseline start 2015-09-28 → none; baseline finish 2015-10-12 → none |
| 31 | Print and ship | 2015-11-02 → 2015-10-09 (-24d) | 2015-12-11 → 2015-11-19 (-22d) |  |  |  | 30FS+3d → 30 | baseline start 2015-10-15 → none; baseline finish 2015-11-26 → none |

## Version 4 (saved 2013-02-13, file 04-advanced-assignments.mpp)

Note of the change: Initial release: SuperGantt planner with MPP open/save.

Last finish 2015-11-19 → 2015-11-13 (-6d).

Added:

| ID | Task | Duration | Start | Finish | Constraint | Resources |
| --- | --- | --- | --- | --- | --- | --- |
| 1 | **Editorial staff meeting** | 60.12d | 2015-04-13 08:00 | 2015-07-06 09:00 |  |  |
| 2 | Editorial staff meeting 1 | 1h | 2015-04-13 08:00 | 2015-04-13 09:00 | start no earlier than 2015-04-13 08:00 | Carole Poland; Jun Cao; Hany Morcos |
| 3 | Editorial staff meeting 2 | 1h | 2015-04-20 08:00 | 2015-04-20 09:00 | start no earlier than 2015-04-20 08:00 | Carole Poland; Jun Cao; Hany Morcos |
| 4 | Editorial staff meeting 3 | 1h | 2015-04-27 08:00 | 2015-04-27 09:00 | start no earlier than 2015-04-27 08:00 | Carole Poland; Jun Cao; Hany Morcos |
| 5 | Editorial staff meeting 4 | 1h | 2015-05-04 08:00 | 2015-05-04 09:00 | start no earlier than 2015-05-04 08:00 | Carole Poland; Jun Cao; Hany Morcos |
| 6 | Editorial staff meeting 5 | 1h | 2015-05-11 08:00 | 2015-05-11 09:00 | start no earlier than 2015-05-11 08:00 | Carole Poland; Jun Cao; Hany Morcos |
| 7 | Editorial staff meeting 6 | 1h | 2015-05-18 08:00 | 2015-05-18 09:00 | start no earlier than 2015-05-18 08:00 | Carole Poland; Jun Cao; Hany Morcos |
| 8 | Editorial staff meeting 7 | 1h | 2015-05-25 08:00 | 2015-05-25 09:00 | start no earlier than 2015-05-25 08:00 | Carole Poland; Jun Cao; Hany Morcos |
| 9 | Editorial staff meeting 8 | 1h | 2015-06-01 08:00 | 2015-06-01 09:00 | start no earlier than 2015-06-01 08:00 | Carole Poland; Jun Cao; Hany Morcos |
| 10 | Editorial staff meeting 9 | 1h | 2015-06-08 08:00 | 2015-06-08 09:00 | start no earlier than 2015-06-08 08:00 | Carole Poland; Jun Cao; Hany Morcos |
| 11 | Editorial staff meeting 10 | 1h | 2015-06-15 08:00 | 2015-06-15 09:00 | start no earlier than 2015-06-15 08:00 | Carole Poland; Jun Cao; Hany Morcos |
| 12 | Editorial staff meeting 11 | 1h | 2015-06-22 08:00 | 2015-06-22 09:00 | start no earlier than 2015-06-22 08:00 | Carole Poland; Jun Cao; Hany Morcos |
| 13 | Editorial staff meeting 12 | 1h | 2015-06-29 08:00 | 2015-06-29 09:00 | start no earlier than 2015-06-29 08:00 | Carole Poland; Jun Cao; Hany Morcos |
| 14 | Editorial staff meeting 13 | 1h | 2015-07-06 08:00 | 2015-07-06 09:00 | start no earlier than 2015-07-06 08:00 | Carole Poland; Jun Cao; Hany Morcos |
| 46 | **Book launch prep** | 1d? | 2015-04-06 08:00 | 2015-04-06 17:00 |  |  |
| 47 | Launch planning | 1d? | 2015-04-06 08:00 | 2015-04-06 17:00 |  | Carole Poland [50%] |
| 48 | Assign launch team members | 1d? | 2015-04-06 08:00 | 2015-04-06 17:00 |  | Hany Morcos |
| 49 | Complete author questionnaire | 1d? | 2015-04-06 08:00 | 2015-04-06 17:00 |  |  |
| 50 | Schedule author interviews | 1d? | 2015-04-06 08:00 | 2015-04-06 17:00 |  |  |

Changed:

| ID | Task | Start | Finish | Duration | Total float | Predecessors | Other |
| --- | --- | --- | --- | --- | --- | --- | --- |
| 15 | **Acquisition** | 2015-04-06 → 2015-04-06 08:00 | 2015-05-08 → 2015-05-13 17:00 (+5d) | 25d → 28d |  |  |  |
| 16 | Manuscript received | 2015-04-06 → 2015-04-06 08:00 | 2015-04-06 → 2015-04-06 08:00 |  | 0d → -7.5d |  |  |
| 17 | Content edit | 2015-04-06 → 2015-04-06 08:00 | 2015-04-24 → 2015-04-29 17:00 (+5d) |  | 0d → -7.5d |  |  |
| 18 | Author review of content edit | 2015-04-27 → 2015-04-30 08:00 (+3d) | 2015-05-08 → 2015-05-13 17:00 (+5d) |  | 0d → -7.5d |  | resources Tad Orman; Copyeditors [25%] → Tad Orman; Copyeditors |
| 19 | Handoff to Editorial | 2015-05-08 → 2015-05-13 17:00 (+5d) | 2015-05-08 → 2015-05-13 17:00 (+5d) |  |  |  |  |
| 20 | **Editorial** | 2015-05-11 → 2015-05-14 08:00 (+3d) | 2015-06-26 → 2015-06-24 17:00 (-2d) | 35d → 30d | 0d → none |  |  |
| 21 | Organize manuscript for copyedit | 2015-05-11 → 2015-05-14 08:00 (+3d) | 2015-05-15 → 2015-05-20 17:00 (+5d) |  | 0d → -7.5d |  |  |
| 22 | Copyedit | 2015-05-18 → 2015-05-21 08:00 (+3d) | 2015-06-05 → 2015-06-17 17:00 (+12d) | 15d → 20d | 0d → -7.5d |  | resources Copyeditors [200%] → Copyeditors [150%] |
| 23 | Author review of copyedit | 2015-06-08 → 2015-06-18 08:00 (+10d) | 2015-06-19 → 2015-07-01 17:00 (+12d) |  | 0d → -7.5d |  |  |
| 24 | Copyedit incorp | 2015-06-22 → 2015-06-29 13:00 (+7d) | 2015-06-26 → 2015-07-06 12:00 (+10d) |  | 0d → -7.5d | 23 → 23FS-2.5% |  |
| 25 | Handoff to Production | 2015-06-26 → 2015-07-06 12:00 (+10d) | 2015-06-26 → 2015-07-06 12:00 (+10d) |  | 0d → -7.5d |  |  |
| 26 | **Design and Production** | 2015-06-29 → 2015-06-25 08:00 (-4d) | 2015-09-23 → 2015-09-03 17:00 (-20d) | 63d → 51d | 0d → 7d |  |  |
| 27 | Set pages | 2015-06-29 → 2015-06-25 08:00 (-4d) | 2015-07-17 → 2015-07-15 17:00 (-2d) |  | 0d → 8d |  |  |
| 28 | Interior illustration design | 2015-07-20 → 2015-06-25 08:00 (-25d) | 2015-08-07 → 2015-07-15 17:00 (-23d) |  | 0d → 8d | 27 → 27SS | resources Luis Sousa → Luis Sousa; Hany Morcos |
| 29 | **1st Pages review** | 2015-08-10 → 2015-07-17 08:00 (-24d) | 2015-09-11 → 2015-08-20 17:00 (-22d) |  | 0d → 7d |  |  |
| 30 | Proofread and index | 2015-08-10 → 2015-07-17 08:00 (-24d) | 2015-08-21 → 2015-07-30 17:00 (-22d) |  | 0d → 7d |  | constraint none → start no earlier than 2015-07-17 08:00 |
| 31 | Incorporate 1st Pages review | 2015-08-24 → 2015-07-31 08:00 (-24d) | 2015-08-28 → 2015-08-06 17:00 (-22d) |  | 0d → 7d |  |  |
| 32 | Send proofed pages to Production | 2015-08-28 → 2015-08-06 17:00 (-22d) | 2015-08-28 → 2015-08-06 17:00 (-22d) |  | 0d → 7d |  |  |
| 33 | Enter page corrections and index | 2015-08-31 → 2015-08-07 08:00 (-24d) | 2015-09-04 → 2015-08-13 17:00 (-22d) |  | 0d → 7d |  |  |
| 34 | Cover design | 2015-09-07 → 2015-08-14 08:00 (-24d) | 2015-09-11 → 2015-08-20 17:00 (-22d) |  | 0d → 7d |  |  |
| 35 | **2nd Pages review** | 2015-09-14 → 2015-08-21 08:00 (-24d) | 2015-09-23 → 2015-09-03 17:00 (-20d) | 8d → 10d | 0d → 7d |  |  |
| 36 | Proof and review | 2015-09-14 → 2015-08-21 08:00 (-24d) | 2015-09-17 → 2015-08-27 17:00 (-21d) | 4d → 5d | 0d → 7d |  |  |
| 37 | Send proofed pages to Production | 2015-09-17 → 2015-08-27 17:00 (-21d) | 2015-09-17 → 2015-08-27 17:00 (-21d) |  | 0d → 7d |  |  |
| 38 | Final review | 2015-09-18 → 2015-08-28 08:00 (-21d) | 2015-09-23 → 2015-09-03 17:00 (-20d) | 4d → 5d | 0d → 7d |  | resources Jane Dow; Hany Morcos; Carole Poland → Jane Dow; Hany Morcos [50%]; Carole Poland [50%] |
| 39 | **Design book's companion website** | 2015-09-14 → 2015-08-21 08:00 (-24d) | 2015-09-18 → 2015-08-27 17:00 (-22d) |  | 3d → 12d | none → 29 |  |
| 40 | Create mockup | 2015-09-14 → 2015-08-21 08:00 (-24d) | 2015-09-16 → 2015-08-25 17:00 (-22d) |  | 3d → 12d | 34 → none | resources Luis Sousa → Luis Sousa; Hany Morcos |
| 41 | Review with author | 2015-09-17 → 2015-08-26 08:00 (-22d) | 2015-09-18 → 2015-08-27 17:00 (-22d) |  | 3d → 12d |  |  |
| 42 | **Color prep and printing** | 2015-09-24 → 2015-09-07 08:00 (-17d) | 2015-11-19 → 2015-11-13 17:00 (-6d) | 41d → 50d | 0d → none | none → 39 |  |
| 43 | Send to color house | 2015-09-24 → 2015-09-07 08:00 (-17d) | 2015-09-24 → 2015-09-07 17:00 (-17d) |  | 0d → 4d | 38, 41 → 35 |  |
| 44 | Generate proofs | 2015-09-25 → 2015-09-08 08:00 (-17d) | 2015-10-08 → 2015-09-21 17:00 (-17d) |  | 0d → 6d |  |  |
| 45 | Print and ship | 2015-10-09 → 2015-09-25 08:00 (-14d) | 2015-11-19 → 2015-11-05 17:00 (-14d) |  | 0d → 6d | 44 → 44FS+3d |  |

## Version 5 (saved 2013-02-13, file 03-advanced-resources.mpp)

Note of the change: Initial release: SuperGantt planner with MPP open/save.

Last finish stays 2015-11-13.

Removed: 46 Book launch prep; 47 Launch planning; 48 Assign launch team members; 49 Complete author questionnaire; 50 Schedule author interviews

Changed:

| ID | Task | Predecessors | Other |
| --- | --- | --- | --- |
| 2 | Editorial staff meeting 1 |  | resources Carole Poland; Jun Cao; Hany Morcos → Carole Poland; Hany Morcos; Jun Cao |
| 3 | Editorial staff meeting 2 |  | resources Carole Poland; Jun Cao; Hany Morcos → Carole Poland; Hany Morcos; Jun Cao |
| 4 | Editorial staff meeting 3 |  | resources Carole Poland; Jun Cao; Hany Morcos → Carole Poland; Hany Morcos; Jun Cao |
| 5 | Editorial staff meeting 4 |  | resources Carole Poland; Jun Cao; Hany Morcos → Carole Poland; Hany Morcos; Jun Cao |
| 6 | Editorial staff meeting 5 |  | resources Carole Poland; Jun Cao; Hany Morcos → Carole Poland; Hany Morcos; Jun Cao |
| 7 | Editorial staff meeting 6 |  | resources Carole Poland; Jun Cao; Hany Morcos → Carole Poland; Hany Morcos; Jun Cao |
| 8 | Editorial staff meeting 7 |  | resources Carole Poland; Jun Cao; Hany Morcos → Carole Poland; Hany Morcos; Jun Cao |
| 9 | Editorial staff meeting 8 |  | resources Carole Poland; Jun Cao; Hany Morcos → Carole Poland; Hany Morcos; Jun Cao |
| 10 | Editorial staff meeting 9 |  | resources Carole Poland; Jun Cao; Hany Morcos → Carole Poland; Hany Morcos; Jun Cao |
| 11 | Editorial staff meeting 10 |  | resources Carole Poland; Jun Cao; Hany Morcos → Carole Poland; Hany Morcos; Jun Cao |
| 12 | Editorial staff meeting 11 |  | resources Carole Poland; Jun Cao; Hany Morcos → Carole Poland; Hany Morcos; Jun Cao |
| 13 | Editorial staff meeting 12 |  | resources Carole Poland; Jun Cao; Hany Morcos → Carole Poland; Hany Morcos; Jun Cao |
| 14 | Editorial staff meeting 13 |  | resources Carole Poland; Jun Cao; Hany Morcos → Carole Poland; Hany Morcos; Jun Cao |
| 18 | Author review of content edit |  | resources Tad Orman; Copyeditors → Tad Orman; Copyeditors [25%] |
| 28 | Interior illustration design |  | resources Luis Sousa; Hany Morcos → Luis Sousa |
| 38 | Final review |  | resources Jane Dow; Hany Morcos [50%]; Carole Poland [50%] → Jane Dow; Hany Morcos; Carole Poland |
| 39 | **Design book's companion website** | 29 → none |  |
| 40 | Create mockup | none → 34 | resources Luis Sousa; Hany Morcos → Luis Sousa |
| 42 | **Color prep and printing** | 39 → none |  |
| 43 | Send to color house | 35 → 38, 41 |  |

## Version 6 (saved 2013-02-20, file 06-advanced-tracking.mpp)

Note of the change: Initial release: SuperGantt planner with MPP open/save.

Last finish 2015-11-13 → 2015-11-26 (+13d). Complete tasks 0 → 19.

Added:

| ID | Task | Duration | Start | Finish | Predecessors | Resources |
| --- | --- | --- | --- | --- | --- | --- |
| 18 | Original art review | 10.25d | 2015-04-23 A | 2015-05-07 A | 17FS-5d | Hany Morcos; Jane Dow |
| 47 | **Book launch prep** | 22d | 2015-09-29 | 2015-10-28 |  |  |
| 48 | Launch planning | 5d | 2015-09-29 | 2015-10-05 | 44 | Carole Poland [50%]; Jane Dow |
| 49 | Assign launch team members | 1d | 2015-10-06 | 2015-10-06 | 48 | Carole Poland |
| 50 | Complete author questionnaire | 5d | 2015-10-07 | 2015-10-13 | 49 | Hany Morcos; Tad Orman; Travel [0.1%] |
| 51 | Schedule author interviews | 1d | 2015-10-14 | 2015-10-14 | 50 | Hany Morcos |
| 52 | Design and order marketing material | 10d | 2015-10-15 | 2015-10-28 | 51 | Hany Morcos |

Changed:

| ID | Task | Start | Finish | Duration | Complete | Total float | Predecessors | Other |
| --- | --- | --- | --- | --- | --- | --- | --- | --- |
| 1 | **Editorial staff meeting** | 2015-04-13 08:00 → 2015-04-13 A | 2015-07-06 09:00 → 2015-08-05 (+30d) | 60.12d → 82.12d | 0% → 37% | 94.88d → 81.88d |  | baseline start none → 2015-04-13; baseline finish none → 2015-07-06 |
| 2 | Editorial staff meeting 1 | 2015-04-13 08:00 → 2015-04-13 A | 2015-04-13 09:00 → 2015-04-13 A |  | 0% → 100% | 154d → none |  | constraint start no earlier than 2015-04-13 08:00 → start no earlier than 2015-04-13; resources Carole Poland; Hany Morcos; Jun Cao → Carole Poland; Jun Cao; Hany Morcos; Dan Jump [50%]; baseline start none → 2015-04-13; baseline finish none → 2015-04-13 |
| 3 | Editorial staff meeting 2 | 2015-04-20 08:00 → 2015-04-20 A | 2015-04-20 09:00 → 2015-04-20 A |  | 0% → 100% | 149d → none |  | constraint start no earlier than 2015-04-20 08:00 → start no earlier than 2015-04-20; resources Carole Poland; Hany Morcos; Jun Cao → Carole Poland; Jun Cao; Hany Morcos; Dan Jump [50%]; baseline start none → 2015-04-20; baseline finish none → 2015-04-20 |
| 4 | Editorial staff meeting 3 | 2015-04-27 08:00 → 2015-04-27 A | 2015-04-27 09:00 → 2015-04-27 A |  | 0% → 100% | 144d → none |  | constraint start no earlier than 2015-04-27 08:00 → start no earlier than 2015-04-27; resources Carole Poland; Hany Morcos; Jun Cao → Carole Poland; Jun Cao; Hany Morcos; Dan Jump [50%]; baseline start none → 2015-04-27; baseline finish none → 2015-04-27 |
| 5 | Editorial staff meeting 4 | 2015-05-04 08:00 → 2015-05-04 A | 2015-05-04 09:00 → 2015-05-04 A |  | 0% → 100% | 139d → none |  | constraint start no earlier than 2015-05-04 08:00 → start no earlier than 2015-05-04; resources Carole Poland; Hany Morcos; Jun Cao → Carole Poland; Jun Cao; Hany Morcos; Dan Jump [50%]; baseline start none → 2015-05-04; baseline finish none → 2015-05-04 |
| 6 | Editorial staff meeting 5 | 2015-05-11 08:00 → 2015-05-11 A | 2015-05-11 09:00 → 2015-05-11 A |  | 0% → 100% | 134d → none |  | constraint start no earlier than 2015-05-11 08:00 → start no earlier than 2015-05-11; resources Carole Poland; Hany Morcos; Jun Cao → Carole Poland; Jun Cao; Hany Morcos; Dan Jump [50%]; baseline start none → 2015-05-11; baseline finish none → 2015-05-11 |
| 7 | Editorial staff meeting 6 | 2015-05-18 08:00 → 2015-05-18 A | 2015-05-18 09:00 → 2015-05-18 A |  | 0% → 100% | 129d → none |  | constraint start no earlier than 2015-05-18 08:00 → start no earlier than 2015-05-18; resources Carole Poland; Hany Morcos; Jun Cao → Carole Poland; Jun Cao; Hany Morcos; Dan Jump [50%]; baseline start none → 2015-05-18; baseline finish none → 2015-05-18 |
| 8 | Editorial staff meeting 7 | 2015-05-25 08:00 → 2015-05-25 A | 2015-05-25 09:00 → 2015-05-25 A |  | 0% → 100% | 124d → none |  | constraint start no earlier than 2015-05-25 08:00 → start no earlier than 2015-05-25; resources Carole Poland; Hany Morcos; Jun Cao → Carole Poland; Jun Cao; Hany Morcos; Dan Jump [50%]; baseline start none → 2015-05-25; baseline finish none → 2015-05-25 |
| 9 | Editorial staff meeting 8 | 2015-06-01 08:00 → 2015-08-04 (+64d) | 2015-06-01 09:00 → 2015-08-05 (+65d) | 1h → 2h |  | 119d → 86.88d |  | constraint start no earlier than 2015-06-01 08:00 → start no earlier than 2015-08-04; resources Carole Poland; Hany Morcos; Jun Cao → Carole Poland; Jun Cao; Hany Morcos; Dan Jump [50%]; baseline start none → 2015-06-01; baseline finish none → 2015-06-01 |
| 10 | Editorial staff meeting 9 | 2015-06-08 08:00 → 2015-08-04 (+57d) | 2015-06-08 09:00 → 2015-08-05 (+58d) | 1h → 2h |  | 114d → 86.88d |  | constraint start no earlier than 2015-06-08 08:00 → start no earlier than 2015-08-04; resources Carole Poland; Hany Morcos; Jun Cao → Carole Poland; Jun Cao; Hany Morcos; Dan Jump [50%]; baseline start none → 2015-06-08; baseline finish none → 2015-06-08 |
| 11 | Editorial staff meeting 10 | 2015-06-15 08:00 → 2015-08-04 (+50d) | 2015-06-15 09:00 → 2015-08-05 (+51d) | 1h → 2h |  | 109d → 86.88d |  | constraint start no earlier than 2015-06-15 08:00 → start no earlier than 2015-08-04; resources Carole Poland; Hany Morcos; Jun Cao → Carole Poland; Jun Cao; Hany Morcos; Dan Jump [50%]; baseline start none → 2015-06-15; baseline finish none → 2015-06-15 |
| 12 | Editorial staff meeting 11 | 2015-06-22 08:00 → 2015-08-04 (+43d) | 2015-06-22 09:00 → 2015-08-05 (+44d) | 1h → 2h |  | 104d → 86.88d |  | constraint start no earlier than 2015-06-22 08:00 → start no earlier than 2015-08-04; resources Carole Poland; Hany Morcos; Jun Cao → Carole Poland; Jun Cao; Hany Morcos; Dan Jump [50%]; baseline start none → 2015-06-22; baseline finish none → 2015-06-22 |
| 13 | Editorial staff meeting 12 | 2015-06-29 08:00 → 2015-08-04 (+36d) | 2015-06-29 09:00 → 2015-08-05 (+37d) | 1h → 2h |  | 99d → 86.88d |  | constraint start no earlier than 2015-06-29 08:00 → start no earlier than 2015-08-04; resources Carole Poland; Hany Morcos; Jun Cao → Carole Poland; Jun Cao; Hany Morcos; Dan Jump [50%]; baseline start none → 2015-06-29; baseline finish none → 2015-06-29 |
| 14 | Editorial staff meeting 13 | 2015-07-06 08:00 → 2015-08-04 (+29d) | 2015-07-06 09:00 → 2015-08-05 (+30d) | 1h → 2h |  | 94d → 86.88d |  | constraint start no earlier than 2015-07-06 08:00 → start no earlier than 2015-08-04; resources Carole Poland; Hany Morcos; Jun Cao → Carole Poland; Jun Cao; Hany Morcos; Dan Jump [50%]; baseline start none → 2015-07-06; baseline finish none → 2015-07-06 |
| 15 | **Acquisition** | 2015-04-06 08:00 → 2015-04-06 A | 2015-05-13 17:00 → 2015-05-26 A (+13d) | 28d → 37d | 0% → 100% | -7.5d → none |  | baseline start none → 2015-04-06; baseline finish none → 2015-05-25 |
| 16 | Manuscript received | 2015-04-06 08:00 → 2015-04-06 A | 2015-04-06 08:00 → 2015-04-06 A |  | 0% → 100% | -7.5d → none |  | baseline start none → 2015-04-06; baseline finish none → 2015-04-06 |
| 17 | Content edit | 2015-04-06 08:00 → 2015-04-06 A | 2015-04-29 17:00 → 2015-04-30 A (+1d) |  | 0% → 100% | -7.5d → none |  | baseline start none → 2015-04-06; baseline finish none → 2015-04-30 |
| 19 | Author review of content edit | 2015-04-30 08:00 → 2015-05-07 A (+7d) | 2015-05-13 17:00 → 2015-05-26 A (+13d) | 10d → 13.5d | 0% → 100% | -7.5d → none | 17 → 17, 18 | resources Tad Orman; Copyeditors [25%] → Tad Orman; Copyeditors; baseline start none → 2015-05-07; baseline finish none → 2015-05-25 |
| 20 | Handoff to Editorial | 2015-05-13 17:00 → 2015-05-26 A (+13d) | 2015-05-13 17:00 → 2015-05-26 A (+13d) |  | 0% → 100% | -7.5d → none |  | baseline start none → 2015-05-25; baseline finish none → 2015-05-25 |
| 21 | **Editorial** | 2015-05-14 08:00 → 2015-05-27 A (+13d) | 2015-06-24 17:00 → 2015-07-06 A (+12d) | 30d → 28.4d | 0% → 100% |  |  | baseline start none → 2015-05-25; baseline finish none → 2015-07-03 |
| 22 | Organize manuscript for copyedit | 2015-05-14 08:00 → 2015-05-27 A (+13d) | 2015-05-20 17:00 → 2015-06-02 A (+13d) |  | 0% → 100% | -7.5d → none |  | resources Hany Morcos → Hany Morcos; Dan Jump [50%]; baseline start none → 2015-05-25; baseline finish none → 2015-06-01 |
| 23 | Copyedit | 2015-05-21 08:00 → 2015-06-03 A (+13d) | 2015-06-17 17:00 → 2015-06-17 A | 20d → 10.5d | 0% → 100% | -7.5d → none |  | resources Copyeditors [150%] → Copyeditors [200%]; baseline start none → 2015-06-01; baseline finish none → 2015-06-16 |
| 24 | Author review of copyedit | 2015-06-18 08:00 → 2015-06-17 A (-1d) | 2015-07-01 17:00 → 2015-07-01 A | 10d → 10.2d | 0% → 100% | -7.5d → none |  | baseline start none → 2015-06-16; baseline finish none → 2015-06-30 |
| 25 | Copyedit incorp | 2015-06-29 13:00 → 2015-06-29 A | 2015-07-06 12:00 → 2015-07-06 A | 5d → 5.12d | 0% → 100% | -7.5d → none |  | resources Hany Morcos → Carole Poland; Dan Jump [50%]; baseline start none → 2015-06-26; baseline finish none → 2015-07-03 |
| 26 | Handoff to Production | 2015-07-06 12:00 → 2015-07-06 A | 2015-07-06 12:00 → 2015-07-06 A |  | 0% → 100% | -7.5d → none |  | baseline start none → 2015-07-03; baseline finish none → 2015-07-03 |
| 27 | **Design and Production** | 2015-06-25 08:00 → 2015-07-06 A (+11d) | 2015-09-03 17:00 → 2015-09-25 (+22d) | 51d → 59.6d | 0% → 43% | 7d → 0d |  | baseline start none → 2015-07-03; baseline finish none → 2015-09-23 |
| 28 | Set pages | 2015-06-25 08:00 → 2015-07-06 A (+11d) | 2015-07-15 17:00 → 2015-07-27 A (+12d) |  | 0% → 100% | 8d → none |  | baseline start none → 2015-07-03; baseline finish none → 2015-07-24 |
| 29 | Interior illustration design | 2015-06-25 08:00 → 2015-07-06 A (+11d) | 2015-07-15 17:00 → 2015-07-29 A (+14d) | 15d → 17.6d | 0% → 100% | 8d → none |  | resources Luis Sousa → Luis Sousa; Hany Morcos; baseline start none → 2015-07-03; baseline finish none → 2015-07-24 |
| 30 | **1st Pages review** | 2015-07-17 08:00 → 2015-07-30 A (+13d) | 2015-08-20 17:00 → 2015-09-09 (+20d) | 25d → 30d | 0% → 7% | 7d → 0d |  | baseline start none → 2015-07-24; baseline finish none → 2015-09-04 |
| 31 | Proofread and index | 2015-07-17 08:00 → 2015-07-30 A (+13d) | 2015-07-30 17:00 → 2015-08-12 (+13d) |  | 0% → 20% | 7d → 0d |  | constraint start no earlier than 2015-07-17 08:00 → start no earlier than 2015-07-17; baseline start none → 2015-07-24; baseline finish none → 2015-08-07 |
| 32 | Incorporate 1st Pages review | 2015-07-31 08:00 → 2015-08-13 (+13d) | 2015-08-06 17:00 → 2015-08-26 (+20d) | 5d → 10d |  | 7d → 0d |  | resources Hany Morcos → Hany Morcos; Dan Jump [50%]; baseline start none → 2015-08-07; baseline finish none → 2015-08-21 |
| 33 | Send proofed pages to Production | 2015-08-06 17:00 → 2015-08-26 (+20d) | 2015-08-06 17:00 → 2015-08-26 (+20d) |  |  | 7d → 0d |  | baseline start none → 2015-08-21; baseline finish none → 2015-08-21 |
| 34 | Enter page corrections and index | 2015-08-07 08:00 → 2015-08-27 (+20d) | 2015-08-13 17:00 → 2015-09-02 (+20d) |  |  | 7d → 0d |  | resources Jane Dow → Jane Dow; Dan Jump [50%]; baseline start none → 2015-08-21; baseline finish none → 2015-08-28 |
| 35 | Cover design | 2015-08-14 08:00 → 2015-09-03 (+20d) | 2015-08-20 17:00 → 2015-09-09 (+20d) |  |  | 7d → 0d |  | baseline start none → 2015-08-28; baseline finish none → 2015-09-04 |
| 36 | **2nd Pages review** | 2015-08-21 08:00 → 2015-09-10 (+20d) | 2015-09-03 17:00 → 2015-09-25 (+22d) | 10d → 12d |  | 7d → 0d |  | baseline start none → 2015-09-04; baseline finish none → 2015-09-23 |
| 37 | Proof and review | 2015-08-21 08:00 → 2015-09-10 (+20d) | 2015-08-27 17:00 → 2015-09-18 (+22d) | 5d → 6.5d |  | 7d → 0d |  | baseline start none → 2015-09-04; baseline finish none → 2015-09-15 |
| 38 | Send proofed pages to Production | 2015-08-27 17:00 → 2015-09-18 (+22d) | 2015-08-27 17:00 → 2015-09-18 (+22d) |  |  | 7d → 0d |  | baseline start none → 2015-09-15; baseline finish none → 2015-09-15 |
| 39 | Final review | 2015-08-28 08:00 → 2015-09-21 (+24d) | 2015-09-03 17:00 → 2015-09-25 (+22d) |  |  | 7d → 0d |  | resources Jane Dow; Hany Morcos; Carole Poland → Jane Dow; Hany Morcos [50%]; Carole Poland [50%]; Bound galley proofs [20 copies]; baseline start none → 2015-09-16; baseline finish none → 2015-09-23 |
| 40 | **Design book's companion website** | 2015-08-21 08:00 → 2015-09-10 (+20d) | 2015-08-27 17:00 → 2015-09-23 (+27d) | 5d → 10d |  | 12d → 2d | none → 30 | baseline start none → 2015-09-04; baseline finish none → 2015-09-18 |
| 41 | Create mockup | 2015-08-21 08:00 → 2015-09-10 (+20d) | 2015-08-25 17:00 → 2015-09-21 (+27d) | 3d → 4.5d |  | 12d → 2d | 35 → none | resources Luis Sousa → Luis Sousa; Hany Morcos; baseline start none → 2015-09-04; baseline finish none → 2015-09-16 |
| 42 | Review with author | 2015-08-26 08:00 → 2015-09-22 (+27d) | 2015-08-27 17:00 → 2015-09-23 (+27d) |  |  | 12d → 2d |  | resources Luis Sousa; Tad Orman → Luis Sousa; Tad Orman; Travel [0.1%]; Dan Jump [50%]; baseline start none → 2015-09-16; baseline finish none → 2015-09-18 |
| 43 | **Color prep and printing** | 2015-09-07 08:00 → 2015-09-28 (+21d) | 2015-11-13 17:00 → 2015-11-26 (+13d) | 50d → 44d |  | none → 0d | none → 40 | baseline start none → 2015-09-23; baseline finish none → 2015-11-26 |
| 44 | Send to color house | 2015-09-07 08:00 → 2015-09-28 (+21d) | 2015-09-07 17:00 → 2015-09-28 (+21d) |  |  | 4d → 0d | 39, 42 → 36 | baseline start none → 2015-09-23; baseline finish none → 2015-09-28 |
| 45 | Generate proofs | 2015-09-08 08:00 → 2015-09-29 (+21d) | 2015-09-21 17:00 → 2015-10-12 (+21d) |  |  | 6d → 0d |  | baseline start none → 2015-09-28; baseline finish none → 2015-10-12 |
| 46 | Print and ship | 2015-09-25 08:00 → 2015-10-16 (+21d) | 2015-11-05 17:00 → 2015-11-26 (+21d) |  |  | 6d → 0d |  | baseline start none → 2015-10-15; baseline finish none → 2015-11-26 |
