# Children's Gourmet Cookbook

How a schedule from MS Project changed from version to version. A marks actual dates.

## Version 1 (data date 2015-09-16, saved 2012-12-30, file 08-advanced-reporting.mpp)

Note of the change: Initial release: SuperGantt planner with MPP open/save.

| ID | WBS | Task | Duration | Start | Finish | Predecessors | Complete | Total float |
| --- | --- | --- | --- | --- | --- | --- | --- | --- |
| 1 | 1 | **Acquisition** | 33d | 2015-07-13 A | 2015-08-26 A |  | 100% |  |
| 2 |  | Manuscript received | 0d | 2015-07-13 A | 2015-07-13 A |  | 100% |  |
| 3 |  | Content edit | 29d | 2015-07-15 A | 2015-08-26 A | 2 | 100% |  |
| 4 |  | Handoff to Editorial | 0d | 2015-08-26 A | 2015-08-26 A | 3 | 100% |  |
| 5 | 2 | **Editorial** | 30d | 2015-08-27 A | 2015-10-07 | 1 | 40% | 0d |
| 6 |  | Organize manuscript for copyedit | 5d | 2015-08-27 A | 2015-09-02 A |  | 100% |  |
| 7 |  | Copyedit | 20d | 2015-09-03 A | 2015-09-30 | 6 | 35% | 0d |
| 8 |  | Copyedit incorp | 5d | 2015-10-01 | 2015-10-07 | 7 |  | 0d |
| 9 |  | Handoff to Production | 0d | 2015-10-07 | 2015-10-07 | 8 |  | 0d |
| 10 | 3 | **Design and Production** | 20d | 2015-08-27 A | 2015-09-23 | 5SS | 63% | 10d |
| 11 |  | Cover design | 5d | 2015-08-27 A | 2015-09-02 A |  | 100% |  |
| 12 |  | Set pages | 10d | 2015-09-03 A | 2015-09-16 | 11 | 70% | 15d |
| 13 |  | Interior illustration design | 15d | 2015-09-03 A | 2015-09-23 | 12SS | 47% | 10d |
| 14 | 4 | **Pages review** | 20d | 2015-10-08 | 2015-11-04 | 10, 5 |  | 0d |
| 15 |  | Proofread and index | 10d | 2015-10-08 | 2015-10-21 |  |  | 0d |
| 16 |  | Incorporate 1st Pages review | 5d | 2015-10-22 | 2015-10-28 | 15 |  | 0d |
| 17 |  | Send proofed pages to Production | 0d | 2015-10-28 | 2015-10-28 | 16 |  | 0d |
| 18 |  | Enter page corrections and index | 5d | 2015-10-29 | 2015-11-04 | 17 |  | 0d |
| 19 |  | Send to print service | 0d | 2015-11-04 | 2015-11-04 | 18 |  | 0d |

## Version 2 (saved 2013-02-13, file 09-consolidating.mpp)

Note of the change: Initial release: SuperGantt planner with MPP open/save.

Last finish stays 2015-11-04. Complete tasks 5 → 3.

Changed:

| ID | Task | Start | Finish | Duration | Complete | Total float | Other |
| --- | --- | --- | --- | --- | --- | --- | --- |
| 1 | **Acquisition** | 2015-07-13 A → 2015-07-15 A (+2d) | 2015-08-26 A → 2015-08-27 A (+1d) | 33d → 31d |  |  | baseline start 2015-07-13 → 2015-07-15; baseline finish 2015-08-14 → 2015-08-27 |
| 2 | Manuscript received | 2015-07-13 A → 2015-07-15 A (+2d) | 2015-07-13 A → 2015-07-15 A (+2d) |  |  |  | baseline start 2015-07-13 → 2015-07-15; baseline finish 2015-07-13 → 2015-07-15 |
| 3 | Content edit |  |  |  |  |  | baseline start 2015-07-13 → 2015-07-15; baseline finish 2015-08-14 → 2015-08-26 |
| 4 | Handoff to Editorial | 2015-08-26 A → 2015-08-27 A (+1d) | 2015-08-26 A → 2015-08-27 A (+1d) |  |  |  | baseline start 2015-08-14 → 2015-08-27; baseline finish 2015-08-14 → 2015-08-27 |
| 5 | **Editorial** | 2015-08-27 A → 2015-08-27 |  |  | 40% → 0% |  | baseline start 2015-08-17 → 2015-08-27; baseline finish 2015-09-25 → 2015-10-07 |
| 6 | Organize manuscript for copyedit | 2015-08-27 A → 2015-08-27 | 2015-09-02 A → 2015-09-02 |  | 100% → 0% | none → 0d | baseline start 2015-08-17 → 2015-08-27; baseline finish 2015-08-21 → 2015-09-02 |
| 7 | Copyedit | 2015-09-03 A → 2015-09-03 |  |  | 35% → 0% |  | baseline start 2015-08-24 → 2015-09-03; baseline finish 2015-09-18 → 2015-09-30 |
| 8 | Copyedit incorp |  |  |  |  |  | baseline start 2015-09-21 → 2015-10-01; baseline finish 2015-09-25 → 2015-10-07 |
| 9 | Handoff to Production |  |  |  |  |  | baseline start 2015-09-25 → 2015-10-07; baseline finish 2015-09-25 → 2015-10-07 |
| 10 | **Design and Production** | 2015-08-27 A → 2015-08-27 |  |  | 63% → 0% |  | baseline start 2015-08-17 → 2015-08-27; baseline finish 2015-09-11 → 2015-09-23 |
| 11 | Cover design | 2015-08-27 A → 2015-08-27 | 2015-09-02 A → 2015-09-02 |  | 100% → 0% | none → 10d | baseline start 2015-08-17 → 2015-08-27; baseline finish 2015-08-21 → 2015-09-02 |
| 12 | Set pages | 2015-09-03 A → 2015-09-03 |  |  | 70% → 0% | 15d → 10d | baseline start 2015-08-24 → 2015-09-03; baseline finish 2015-09-04 → 2015-09-16 |
| 13 | Interior illustration design | 2015-09-03 A → 2015-09-03 |  |  | 47% → 0% |  | baseline start 2015-08-24 → 2015-09-03; baseline finish 2015-09-11 → 2015-09-23 |
| 14 | **Pages review** |  |  |  |  |  | baseline start 2015-09-28 → 2015-10-08; baseline finish 2015-10-23 → 2015-11-04 |
| 15 | Proofread and index |  |  |  |  |  | baseline start 2015-09-28 → 2015-10-08; baseline finish 2015-10-09 → 2015-10-21 |
| 16 | Incorporate 1st Pages review |  |  |  |  |  | baseline start 2015-10-12 → 2015-10-22; baseline finish 2015-10-16 → 2015-10-28 |
| 17 | Send proofed pages to Production |  |  |  |  |  | baseline start 2015-10-16 → 2015-10-28; baseline finish 2015-10-16 → 2015-10-28 |
| 18 | Enter page corrections and index |  |  |  |  |  | baseline start 2015-10-19 → 2015-10-29; baseline finish 2015-10-23 → 2015-11-04 |
| 19 | Send to print service |  |  |  |  |  | baseline start 2015-10-23 → 2015-11-04; baseline finish 2015-10-23 → 2015-11-04 |
